# FOPLP 面板式封装

Schedule from a web Gantt chart, 2025-06-13 to 2026-04-17.
Every day is a working day

## Schedule

| ID | WBS | Task | Duration | Start | Finish | Predecessors | Complete | Status |
| --- | --- | --- | --- | --- | --- | --- | --- | --- |
| 2 | 1 | FOPLP 8X9 Design | 6d | 2025-06-13 | 2025-06-18 |  | 100% | done |
| 3 | 2 | 2-FM+2M RDL wafer | 9d | 2025-07-18 | 2025-07-26 |  | 100% | done |
| 4 | 3 | 1st Eng sample | 45d | 2025-08-04 | 2025-09-17 |  | 100% | done |
| 5 | 4 | **RE 摸底** | 70d | 2025-09-18 | 2025-11-26 |  | 42% |  |
| 6 | 4.1 | Pre-con/MSL | 33d | 2025-09-18 | 2025-10-20 | 4 | 100% | done |
| 7 | 4.2 | 1st TC200 | 9d | 2025-10-20 | 2025-10-28 |  | 100% | done |
| 8 | 4.3 | 1st TC500 | 21d | 2025-10-21 | 2025-11-10 |  |  |  |
| 9 | 4.4 | 1st TC1000 | 37d | 2025-10-21 | 2025-11-26 |  |  |  |
| 10 | 5 | **Pre-qual 1 lot** | 94d | 2025-10-13 | 2026-01-14 |  | 100% |  |
| 11 | 5.1 | FOPLP 8X8 design | 12d | 2025-10-13 | 2025-10-24 |  | 100% | done |
| 12 | 5.2 | Wafer process | 22d | 2025-10-20 | 2025-11-10 |  | 100% |  |
| 13 | 5.3 | FOPLP 8X8 ES Assembly | 36d | 2025-11-10 | 2025-12-15 |  | 100% | done |
| 14 | 5.4 | TC200 | 14d | 2025-12-16 | 2025-12-29 |  | 100% | done |
| 15 | 5.5 | TC500 | 30d | 2025-12-16 | 2026-01-14 |  | 100% | done |
| 16 | 6 | **Formal Qual.** | 171d | 2025-10-27 | 2026-04-15 |  |  |  |
| 17 | 6.1 | Wafer process | 32d | 2025-10-27 | 2025-11-27 |  |  |  |
| 18 | 6.2 | **Assembly (3-FM+2M BSL)** | 93d | 2025-11-28 | 2026-02-28 |  |  |  |
| 19 | 6.2.1 | RDL+CP | 30d | 2025-11-28 | 2025-12-27 |  |  |  |
| 20 | 6.2.2 | FOPLP 8X8 封装 | 45d | 2026-01-15 | 2026-02-28 | 15 |  |  |
| 21 | 6.3 | **RE Qual.(3lots)** | 46d | 2026-03-01 | 2026-04-15 |  |  | waiting |
| 22 | 6.3.1 | TC200 | 14d | 2026-03-01 | 2026-03-14 | 20 |  | waiting |
| 23 | 6.3.2 | TC500 | 30d | 2026-03-05 | 2026-04-03 |  |  | waiting |
| 24 | 6.3.3 | TC1000 | 42d | 2026-03-05 | 2026-04-15 |  |  | waiting |
| 25 | 7 | FOPLP 8X8 Release | 2d | 2026-04-16 | 2026-04-17 | 24 |  | waiting |

Notes:
- 11: FOPLP8X8 方案 (背面漏铜和漏Si) 待台达确认
- 12: 3-FM+2M
